# Projeto EzMart

Schedule from MS Project, 2018-02-19 to 2018-11-10, status date 2017-02-01, A marks actual dates.

## Calendars

- Standard: Mon-Fri 08:00-12:00, 13:00-17:00; Sat-Sun off. Exceptions (off unless hours are given): 2018-03-03 08:00-12:00, 13:00-17:00, 2018-04-07 08:00-12:00, 13:00-17:00, 2018-06-30 08:00-12:00, 13:00-17:00, 2018-09-08 08:00-12:00, 13:00-17:00, 2018-11-10 08:00-12:00, 13:00-17:00.

## Resources

| Resource |
| --- |
| Marcos H |
| Jéssica |
| Diego |
| Marcos P |
| Camila |

## Schedule

| ID | WBS | Task | Duration | Start | Finish | Predecessors | Complete | Remaining | Actual start | Actual finish | Baseline start | Baseline finish | Baseline duration | Baseline 1 start | Baseline 1 finish | Total slack | Constraint | Resources | Work | Actual work | Responsável | Critical? | Text3 |
| --- | --- | --- | --- | --- | --- | --- | --- | --- | --- | --- | --- | --- | --- | --- | --- | --- | --- | --- | --- | --- | --- | --- | --- |
| 1 | FAI-PFC-3 | **FASE I** | 37d | 2018-02-19 A | 2018-04-07 |  | 71% | 10.67d |  |  | 2018-02-23 | 2018-04-07 | 32d | 2014-03-03 | 2014-04-09 |  |  |  | 247h | 227h |  |  |  |
| 2 | FAI-PFC-3.1 | **Comunicação** | 15d | 2018-02-19 A | 2018-03-09 |  | 82% | 2.62d |  |  | 2018-02-23 | 2018-03-08 | 9d | 2014-03-03 | 2014-03-13 |  |  |  | 19h | 19h |  |  |  |
| 3 | FAI-PFC-3.1.1 | **Requisitos Funcionais** | 2d | 2018-03-03 A | 2018-03-06 A |  | 100% |  |  |  | 2018-02-23 | 2018-02-28 | 3d | 2014-03-03 | 2014-03-05 |  |  |  | 5h | 5h | Name1 |  |  |
| 4 | FAI-PFC-3.1.1.1 | Revisar Requisitos Funcionais | 1d | 2018-03-03 A | 2018-03-05 A |  | 100% |  |  |  | 2018-02-23 | 2018-02-26 | 1d | 2014-03-03 | 2014-03-04 |  | start no earlier than 2018-03-03 | Marcos H | 4h | 4h |  | Sim | Sim |
| 5 | FAI-PFC-3.1.1.2 | Alterar Requisitos Funcionais | 1d | 2018-03-05 A | 2018-03-06 A |  | 100% |  |  |  | 2018-02-26 | 2018-02-27 | 1d | 2014-03-04 | 2014-03-04 |  |  | Marcos H | 1h | 1h |  | Sim | Sim |
| 6 | FAI-PFC-3.1.2 | **Requisitos Não Funcionais** | 3d | 2018-02-19 A | 2018-02-22 |  | 71% | 0.88d |  |  | 2018-02-28 | 2018-03-05 | 3d | 2014-03-06 | 2014-03-10 | 12d |  |  | 14h | 14h | Name2 |  |  |
| 7 | FAI-PFC-3.1.2.1 | Elaborar requisitos não funcionais | 1d | 2018-02-19 A | 2018-02-20 A |  | 100% |  |  |  | 2018-02-28 | 2018-03-01 | 1d | 2014-03-06 | 2014-03-06 |  |  | Jéssica | 8h | 8h |  | Sim | Sim |
| 8 | FAI-PFC-3.1.2.2 | Revisar requisitos não funcionais | 1d | 2018-02-20 A | 2018-02-21 |  | 38% | 0.62d |  |  | 2018-03-01 | 2018-03-02 | 1d | 2014-03-07 | 2014-03-07 | 13d |  | Jéssica | 3h | 3h |  | Não | Não |
| 9 | FAI-PFC-3.1.2.3 | Alterar requisitos não funcionais | 1d | 2018-02-21 A | 2018-02-22 | 5 | 75% | 0.25d |  |  | 2018-03-02 | 2018-03-05 | 1d | 2014-03-10 | 2014-03-10 | 12d |  | Jéssica | 3h | 3h |  | Não | Não |
| 10 | FAI-PFC-3.2 | **Modelagem** | 12d | 2018-02-22 | 2018-03-09 A |  | 100% |  | 2018-02-26 |  | 2018-03-08 | 2018-03-21 | 9d | 2014-03-14 | 2014-03-26 |  |  |  | 36h | 36h |  |  |  |
| 11 | FAI-PFC-3.2.1 | **Casos de Uso** | 5d | 2018-02-26 A | 2018-03-02 |  | 100% |  |  | 2018-03-01 | 2018-03-08 | 2018-03-13 | 3d | 2014-03-14 | 2014-03-18 |  |  |  | 14h | 14h | Name1 |  |  |
| 12 | FAI-PFC-3.2.1.1 | Criar diagrama dos Casos de Uso | 1d | 2018-02-26 A | 2018-02-27 A |  | 100% |  |  |  | 2018-03-08 | 2018-03-09 | 1d | 2014-03-14 | 2014-03-14 |  |  | Marcos H | 8h | 8h |  | Sim | Sim |
| 13 | FAI-PFC-3.2.1.2 | Revisar diagrama dos Casos de Uso | 1.88d | 2018-02-28 A | 2018-03-01 A | 12 | 100% |  |  |  | 2018-03-09 | 2018-03-12 | 1d | 2014-03-17 | 2014-03-17 |  | finish no earlier than 2018-03-01 | Diego | 2h | 2h |  | Sim | Sim |
| 14 | FAI-PFC-3.2.1.3 | Alterar diagrama dos Casos de Uso | 1d | 2018-02-28 A | 2018-03-01 A | 13 | 100% |  |  |  | 2018-03-12 | 2018-03-13 | 1d | 2014-03-18 | 2014-03-18 |  |  | Diego | 4h | 4h |  | Sim | Sim |
| 15 | FAI-PFC-3.2.2 | **MER** | 6d | 2018-03-02 A | 2018-03-09 A | 14 | 100% |  |  |  | 2018-03-13 | 2018-03-16 | 3d | 2014-03-19 | 2014-03-21 |  |  |  | 22h | 22h | Name2 |  |  |
| 16 | FAI-PFC-3.2.2.1 | Criar Modelo Entidade-Relacionamento | 2d | 2018-03-02 A | 2018-03-05 A | 14 | 100% |  |  |  | 2018-03-13 | 2018-03-14 | 1d | 2014-03-19 | 2014-03-19 |  |  | Diego | 12h | 12h |  | Sim | Sim |
| 17 | FAI-PFC-3.2.2.2 | Revisar Modelo Entidade-Relacionamento | 1d | 2018-03-06 A | 2018-03-07 A | 16 | 100% |  |  |  | 2018-03-14 | 2018-03-15 | 1d | 2014-03-20 | 2014-03-20 |  |  | Diego | 5h | 5h |  | Sim | Sim |
| 18 | FAI-PFC-3.2.2.3 | Alterar Modelo Entidade-Relacionamento | 1d | 2018-03-08 A | 2018-03-09 A | 17 | 100% |  |  |  | 2018-03-15 | 2018-03-16 | 1d | 2014-03-21 | 2014-03-21 |  |  | Diego | 5h | 5h |  | Sim | Sim |
| 19 | FAI-PFC-3.3 | **Documentação** | 19d | 2018-03-07 A | 2018-04-03 |  | 90% | 1.9d |  |  | 2018-03-21 | 2018-04-03 | 9d | 2014-03-27 | 2014-04-09 |  |  |  | 85h | 85h |  |  |  |
| 20 | FAI-PFC-3.3.1 | **Introdução** | 3d | 2018-03-07 A | 2018-03-12 A |  | 100% |  |  |  | 2018-03-21 | 2018-03-26 | 3d | 2014-03-27 | 2014-03-31 |  |  |  | 18h | 18h | Name1 |  |  |
| 21 | FAI-PFC-3.3.1.1 | Elaborar Capítulo 1 | 1d | 2018-03-07 A | 2018-03-08 A |  | 100% |  |  |  | 2018-03-21 | 2018-03-22 | 1d | 2014-03-27 | 2014-03-27 |  | finish no earlier than 2014-03-27 | Jéssica | 10h | 10h |  | Sim | Sim |
| 22 | FAI-PFC-3.3.1.2 | Revisar Capítulo 1 | 1d | 2018-03-08 A | 2018-03-09 A | 21 | 100% |  |  |  | 2018-03-22 | 2018-03-23 | 1d | 2014-03-28 | 2014-03-28 |  | start no earlier than 2014-03-28 | Marcos H | 2h | 2h |  | Sim | Sim |
| 23 | FAI-PFC-3.3.1.3 | Alterar Capítulo 1 | 1d | 2018-03-09 A | 2018-03-12 A | 22 | 100% |  |  |  | 2018-03-23 | 2018-03-26 | 1d | 2014-03-31 | 2014-03-31 |  | start no earlier than 2014-03-31 | Jéssica | 6h | 6h |  | Sim | Sim |
| 24 | FAI-PFC-3.3.1 | **Revisão Bibliográfica** | 5d | 2018-03-12 A | 2018-03-19 |  | 83% | 0.83d |  |  | 2018-03-21 | 2018-03-26 | 3d | 2014-03-27 | 2014-03-31 |  |  |  | 17h | 17h | Name1 |  |  |
| 25 | FAI-PFC-3.3.1.1 | Elaborar Capítulo 2 | 1d | 2018-03-12 A | 2018-03-13 A |  | 100% |  |  |  | 2018-03-21 | 2018-03-22 | 1d | 2014-03-27 | 2014-03-27 |  | finish no earlier than 2014-03-27 | Jéssica | 10h | 10h |  | Sim | Sim |
| 26 | FAI-PFC-3.3.1.2 | Revisar Capítulo 2 | 1d | 2018-03-14 A | 2018-03-15 | 25 | 50% | 0.5d |  |  | 2018-03-22 | 2018-03-23 | 1d | 2014-03-28 | 2014-03-28 | 175.88d | finish no earlier than 2018-03-15 | Marcos H | 1h | 1h |  | Não | Não |
| 27 | FAI-PFC-3.3.1.3 | Alterar Capítulo 2 | 1d | 2018-03-16 A | 2018-03-19 A | 26 | 100% |  |  |  | 2018-03-23 | 2018-03-26 | 1d | 2014-03-31 | 2014-03-31 |  | start no earlier than 2014-03-31 | Jéssica | 6h | 6h |  | Sim | Sim |

Notes:
- 3: Criação dos requisitos funcionais do projeto.
- 6: Criação dos requisitos não funcionais do projeto.
- 11: Elaboração dos casos de uso.
- 15: Elaboração do Modelo Entidade-Relacionamento.
- 20: Elaboração do Capitulo 1.
- 24: Elaboração do Capitulo 2.

| ID | WBS | Task | Type | Duration | Start | Finish | Predecessors | Complete | Remaining | Actual start | Actual finish | Baseline start | Baseline finish | Baseline duration | Baseline 1 start | Baseline 1 finish | Total slack | Free slack | Constraint | Resources | Work | Actual work | Responsável | Critical? | Text3 |
| --- | --- | --- | --- | --- | --- | --- | --- | --- | --- | --- | --- | --- | --- | --- | --- | --- | --- | --- | --- | --- | --- | --- | --- | --- | --- |
| 28 | FAI-PFC-3.3.1 | **Objetivo** |  | 3d | 2018-03-19 A | 2018-03-22 |  | 94% | 0.17d |  |  | 2018-03-21 | 2018-03-26 | 3d | 2014-03-27 | 2014-03-31 |  |  |  |  | 17h | 17h | Name1 |  |  |
| 29 | FAI-PFC-3.3.1.1 | Elaborar Capítulo 3 |  | 1d | 2018-03-19 A | 2018-03-20 A |  | 100% |  |  |  | 2018-03-21 | 2018-03-22 | 1d | 2014-03-27 | 2014-03-27 |  |  | finish no earlier than 2014-03-27 | Jéssica | 10h | 10h |  | Sim | Sim |
| 30 | FAI-PFC-3.3.1.2 | Revisar Capítulo 3 |  | 1d | 2018-03-20 A | 2018-03-21 A | 29 | 100% |  |  |  | 2018-03-22 | 2018-03-23 | 1d | 2014-03-28 | 2014-03-28 |  |  | start no earlier than 2014-03-28 | Marcos H | 2h | 2h |  | Sim | Sim |
| 31 | FAI-PFC-3.3.1.3 | Alterar Capítulo 3 |  | 1d | 2018-03-20 A | 2018-03-21 | 30 | 83% | 0.17d |  |  | 2018-03-23 | 2018-03-26 | 1d | 2014-03-31 | 2014-03-31 | 171.88d |  | start no earlier than 2014-03-31 | Jéssica | 5h | 5h |  | Não | Não |
| 32 | FAI-PFC-3.3.2 | **Gerência de Projeto** |  | 3d | 2018-03-22 A | 2018-03-27 A |  | 100% |  |  |  | 2018-03-26 | 2018-03-29 | 3d | 2014-04-01 | 2014-04-03 |  |  |  |  | 18h | 18h | Name2 |  |  |
| 33 | FAI-PFC-3.3.2.1 | Elaborar Capítulo 4 |  | 1d | 2018-03-22 A | 2018-03-23 A |  | 100% |  |  |  | 2018-03-26 | 2018-03-27 | 1d | 2014-04-01 | 2014-04-01 |  |  | finish no earlier than 2014-04-01 | Jéssica | 10h | 10h |  | Sim | Sim |
| 34 | FAI-PFC-3.3.2.2 | Revisar Capítulo 4 |  | 1d | 2018-03-23 A | 2018-03-26 A | 33 | 100% |  |  |  | 2018-03-27 | 2018-03-28 | 1d | 2014-04-02 | 2014-04-02 |  |  | finish no earlier than 2014-04-02 | Marcos H | 2h | 2h |  | Sim | Sim |
| 35 | FAI-PFC-3.3.2.3 | Alterar Capítulo 4 |  | 1d | 2018-03-26 A | 2018-03-27 A | 34 | 100% |  |  |  | 2018-03-28 | 2018-03-29 | 1d | 2014-04-03 | 2014-04-03 |  |  | finish no earlier than 2014-04-03 | Jéssica | 6h | 6h |  | Sim | Sim |
| 36 | FAI-PFC-3.3.3 | **Especificação e Análise dos Requisitos** |  | 3d | 2018-03-28 A | 2018-04-02 |  | 72% | 0.83d |  |  | 2018-03-29 | 2018-04-03 | 3d | 2014-04-04 | 2014-04-08 |  |  |  |  | 15h | 15h | Name3 |  |  |
| 37 | FAI-PFC-3.3.3.1 | Elaborar Capítulo 5 |  | 1d | 2018-03-28 A | 2018-03-29 A |  | 100% |  |  |  | 2018-03-29 | 2018-03-30 | 1d | 2014-04-04 | 2014-04-04 |  |  |  | Jéssica | 10h | 10h |  | Sim | Sim |
| 38 | FAI-PFC-3.3.3.2 | Revisar Capítulo 5 |  | 1d | 2018-03-30 A | 2018-04-02 | 37 | 50% | 0.5d |  |  | 2018-03-30 | 2018-04-02 | 1d | 2014-04-07 | 2014-04-07 | -0.33d | 0d |  | Marcos H | 1h | 1h |  | Não | Não |
| 39 | FAI-PFC-3.3.3.3 | Alterar Capítulo 5 |  | 1d | 2018-03-30 A | 2018-04-02 | 38 | 67% | 0.33d |  |  | 2018-04-02 | 2018-04-03 | 1d | 2014-04-08 | 2014-04-08 | 0d |  |  | Jéssica | 4h | 4h |  | Sim | Sim |
| 40 | FAI-PFC-3.3 | **Construção** |  | 21d | 2018-03-09 A | 2018-04-07 |  | 52% | 10.12d |  |  | 2018-03-21 | 2018-04-03 | 9d | 2014-03-27 | 2014-04-09 | 158.88d |  |  |  | 107h | 87h |  |  |  |
| 41 | FAI-PFC-3.3.1 | **Banco de Dados** |  | 4d | 2018-03-09 A | 2018-03-15 A |  | 100% |  |  |  | 2018-03-21 | 2018-03-26 | 3d | 2014-03-27 | 2014-03-31 |  |  |  |  | 30h | 30h | Name1 |  |  |
| 42 | FAI-PFC-3.3.1.1 | Criar Banco de Dados |  | 1d | 2018-03-09 A | 2018-03-12 A | 18 | 100% |  |  |  | 2018-03-21 | 2018-03-22 | 1d | 2014-03-27 | 2014-03-27 |  |  | finish no earlier than 2014-03-27 | Marcos P; Diego | 18h | 18h |  | Sim | Sim |
| 43 | FAI-PFC-3.3.1.2 | Revisar Banco de Dados |  | 1d | 2018-03-13 A | 2018-03-14 A | 42 | 100% |  |  |  | 2018-03-22 | 2018-03-23 | 1d | 2014-03-28 | 2014-03-28 |  |  | start no earlier than 2014-03-28 | Marcos P | 6h | 6h |  | Sim | Sim |
| 44 | FAI-PFC-3.3.1.3 | Alterar Banco de Dados |  | 1d | 2018-03-14 A | 2018-03-15 A | 43 | 100% |  |  |  | 2018-03-23 | 2018-03-26 | 1d | 2014-03-31 | 2014-03-31 |  |  | start no earlier than 2014-03-31 | Marcos P | 6h | 6h |  | Sim | Sim |
| 45 | FAI-PFC-3.3.1 | **Código Front-End** |  | 17d | 2018-03-15 A | 2018-04-07 |  | 36% | 10.92d |  |  | 2018-03-21 | 2018-03-26 | 3d | 2014-03-27 | 2014-03-31 |  |  |  |  | 46h | 28h | Name1 |  |  |
| 46 | FAI-PFC-3.3.1.1 | Codificar Front-End |  | 6d | 2018-03-15 A | 2018-03-23 |  | 26% | 4.45d |  |  | 2018-03-21 | 2018-03-22 | 1d | 2014-03-27 | 2014-03-27 | 11d | 0d |  | Marcos P | 33h | 22h |  | Não | Não |
| 47 | FAI-PFC-3.3.1.2 | Revisar código Front-End |  | 4d | 2018-03-23 A | 2018-03-29 | 46 | 40% | 2.4d |  |  | 2018-03-22 | 2018-03-23 | 1d | 2014-03-28 | 2014-03-28 | 164.38d | 4d | start no earlier than 2014-03-28 | Marcos P | 5h | 2h |  | Não | Não |
| 48 | FAI-PFC-3.3.1.3 | Alterar código Front-End |  | 3d | 2018-04-04 A | 2018-04-07 | 47 | 50% | 1.5d |  |  | 2018-03-23 | 2018-03-26 | 1d | 2014-03-31 | 2014-03-31 | 158.88d |  | start no earlier than 2014-03-31 | Marcos P | 8h | 4h |  | Não | Não |
| 49 | FAI-PFC-3.3.1 | **Código Back-End** |  | 14d | 2018-03-16 | 2018-04-05 |  | 57% | 6.08d | 2018-03-15 |  | 2018-03-21 | 2018-03-26 | 3d | 2014-03-27 | 2014-03-31 |  |  |  |  | 31h | 29h | Name1 |  |  |
| 50 | FAI-PFC-3.3.1.1 | **Criar código Back-End** |  | 14d | 2018-03-15 A | 2018-04-04 |  | 100% |  |  | 2018-03-20 | 2018-03-21 | 2018-03-22 | 1d | 2014-03-27 | 2014-03-27 |  |  |  |  | 24h | 24h |  | Não | Não |
| 51 | 1.4.3.1.1 | RF 04 – Cadastrar consumidor | manual | 1d | 2018-03-15 A | 2018-03-16 A |  | 100% |  |  |  |  |  |  |  |  |  |  |  | Marcos P | 8h | 8h |  | Sim | Sim |
| 52 | 1.4.3.1.2 | RF 05 – Cadastrar estabelecimento | manual | 1d | 2018-03-16 A | 2018-03-19 A |  | 100% |  |  |  |  |  |  |  |  |  |  |  | Marcos P | 8h | 8h |  | Sim | Sim |
| 53 | 1.4.3.1.3 | RF 01 – Realizar autenticação | manual | 1d | 2018-03-19 A | 2018-03-20 A | 51, 52 | 100% |  |  |  |  |  |  |  |  |  |  |  | Marcos P | 8h | 8h |  | Sim | Sim |
| 54 | FAI-PFC-3.3.1.2 | Revisar código Back-End |  | 7.25d | 2018-03-26 A | 2018-04-04 | 50 | 41% | 4.25d |  |  | 2018-03-22 | 2018-03-23 | 1d | 2014-03-28 | 2014-03-28 | 160.12d | 0d | start no earlier than 2014-03-28 | Marcos P | 5h | 3h |  | Não | Não |
| 55 | FAI-PFC-3.3.1.3 | Alterar código Back-End |  | 3d | 2018-03-30 A | 2018-04-04 | 54 | 50% | 1.5d |  |  | 2018-03-23 | 2018-03-26 | 1d | 2014-03-31 | 2014-03-31 | 161.88d |  | start no earlier than 2014-03-31 | Marcos P | 2h | 2h |  | Não | Não |
| 56 | FAI-PFC-4 | Fase I - Término | milestone | 0d | 2018-04-07 | 2018-04-07 |  |  |  |  |  | 2018-04-07 | 2018-04-07 | 0d | 2014-04-09 | 2014-04-09 | 158.88d | 158d | start no earlier than 2018-04-07 |  |  |  |  | Não | Não |

Notes:
- 28: Elaboração do Capitulo 3.
- 32: Elaboração do Capitulo 4.
- 36: Elaboração do Capitulo 5.
- 41: Criação do script do banco de dados.
- 45: Criação do código Front-End.
- 49: Criação do código Back-End.

| ID | WBS | Task | Type | Duration | Start | Finish | Predecessors | Complete | Remaining | Actual start | Baseline start | Baseline finish | Baseline duration | Baseline 1 start | Baseline 1 finish | Constraint | Resources | Work | Actual work | Responsável | Critical? | Text3 |
| --- | --- | --- | --- | --- | --- | --- | --- | --- | --- | --- | --- | --- | --- | --- | --- | --- | --- | --- | --- | --- | --- | --- |
| 57 | FAI-PFC-6 | **FASE 2** |  | 58d | 2018-04-12 | 2018-07-02 |  | 64% | 20.87d | 2018-04-02 | 2018-04-07 | 2018-06-30 | 62d | 2014-03-03 | 2014-04-09 |  |  | 227h | 188.46h |  |  |  |
| 58 | FAI-PFC-6.4 | **Documentação** |  | 14d | 2018-04-12 A | 2018-05-02 A | 56 | 100% |  |  | 2018-04-07 | 2018-04-19 | 9d | 2014-03-03 | 2014-03-13 |  |  | 42h | 42h |  |  |  |
| 59 | FAI-PFC-6.4.4 | **Correção Fase 1** |  | 5d | 2018-04-12 A | 2018-04-19 A | 56 | 100% |  |  | 2018-04-07 | 2018-04-11 | 3d | 2014-03-03 | 2014-03-05 |  |  | 15h | 15h | Name1 |  |  |
| 60 | FAI-PFC-6.4.4.4 | Corrigir texto do Capítulo 1 |  | 1d | 2018-04-12 A | 2018-04-13 A | 56 | 100% |  |  | 2018-04-07 | 2018-04-09 | 1d | 2014-03-03 | 2014-03-04 |  | Jéssica | 3h | 3h |  | Sim | Sim |
| 61 | FAI-PFC-6.4.4.5 | Corrigir texto do Capítulo 2 |  | 1d | 2018-04-13 A | 2018-04-16 A | 60 | 100% |  |  | 2018-04-09 | 2018-04-10 | 1d | 2014-03-04 | 2014-03-04 |  | Jéssica | 3h | 3h |  | Sim | Sim |
| 62 | 3.1.1.3 | Corrigir texto do Capítulo 3 | manual | 1d | 2018-04-16 A | 2018-04-17 A | 61 | 100% |  |  |  |  |  |  |  |  | Jéssica | 3h | 3h |  | Sim | Sim |
| 63 | 3.1.1.4 | Corrigir texto do Capítulo 4 | manual | 1d | 2018-04-17 A | 2018-04-18 A | 62 | 100% |  |  |  |  |  |  |  |  | Jéssica | 3h | 3h |  | Sim | Sim |
| 64 | FAI-PFC-6.4.4.6 | Corrigir texto do Capítulo 5 |  | 1d | 2018-04-18 A | 2018-04-19 A | 63 | 100% |  |  | 2018-04-10 | 2018-04-11 | 1d | 2014-03-05 | 2014-03-05 | start no earlier than 2018-04-18 | Jéssica | 3h | 3h |  | Sim | Sim |
| 65 | FAI-PFC-6.4.5 | **Gerência de Projetos** |  | 3d | 2018-04-19 A | 2018-04-24 A |  | 100% |  |  | 2018-04-11 | 2018-04-16 | 3d | 2014-03-06 | 2014-03-10 |  |  | 16h | 16h | Name2 |  |  |
| 66 | FAI-PFC-6.4.5.4 | Criar Gestão dos Riscos |  | 1d | 2018-04-19 A | 2018-04-20 A |  | 100% |  |  | 2018-04-11 | 2018-04-12 | 1d | 2014-03-06 | 2014-03-06 |  | Jéssica | 4h | 4h |  | Sim | Sim |
| 67 | FAI-PFC-6.4.5.5 | Criar Gestão da Qualidade |  | 1d | 2018-04-20 A | 2018-04-23 A | 66 | 100% |  |  | 2018-04-12 | 2018-04-13 | 1d | 2014-03-07 | 2014-03-07 |  | Jéssica | 6h | 6h |  | Sim | Sim |
| 68 | FAI-PFC-6.4.5.6 | Criar Gestão da Integração |  | 1d | 2018-04-23 A | 2018-04-24 A | 67 | 100% |  |  | 2018-04-13 | 2018-04-16 | 1d | 2014-03-10 | 2014-03-10 |  | Jéssica | 6h | 6h |  | Sim | Sim |
| 69 | FAI-PFC-6.4.6 | **Especificação e Análise dos Requisitos** |  | 1d | 2018-04-24 A | 2018-04-25 A |  | 100% |  |  | 2018-04-16 | 2018-04-19 | 3d | 2014-03-11 | 2014-03-13 |  |  | 5h | 5h | Name3 |  |  |
| 70 | FAI-PFC-6.4.6.4 | Criar Métricas para Estimativa do Esforço |  | 1d | 2018-04-24 A | 2018-04-25 A |  | 100% |  |  | 2018-04-16 | 2018-04-17 | 1d | 2014-03-11 | 2014-03-11 |  | Diego | 5h | 5h |  | Sim | Sim |
| 71 | FAI-PFC-6.4.6 | **Revisão do documento** |  | 6d | 2018-04-24 A | 2018-05-02 A | 68 | 100% |  |  | 2018-04-16 | 2018-04-19 | 3d | 2014-03-11 | 2014-03-13 |  |  | 6h | 6h | Name3 |  |  |
| 72 | FAI-PFC-6.4.6.4 | Revisar documento |  | 5d | 2018-04-24 A | 2018-05-01 A | 68 | 100% |  |  | 2018-04-16 | 2018-04-17 | 1d | 2014-03-11 | 2014-03-11 |  | Marcos H | 5h | 5h |  | Sim | Sim |
| 73 | FAI-PFC-6.4.6.5 | Alterar documento |  | 1d | 2018-05-01 A | 2018-05-02 A | 72 | 100% |  |  | 2018-04-17 | 2018-04-18 | 1d | 2014-03-12 | 2014-03-12 |  | Marcos H | 1h | 1h |  | Sim | Sim |
| 74 | FAI-PFC-6.5 | **Modelagem** |  | 13d | 2018-04-12 A | 2018-05-01 A |  | 100% |  |  | 2018-04-19 | 2018-05-02 | 9d | 2014-03-14 | 2014-03-26 |  |  | 32h | 32h |  |  |  |
| 75 | FAI-PFC-6.5.4 | **Correção dos Casos de Uso** |  | 3d | 2018-04-12 A | 2018-04-17 A |  | 100% |  |  | 2018-04-19 | 2018-04-24 | 3d | 2014-03-14 | 2014-03-18 |  |  | 6h | 6h | Name1 |  |  |
| 76 | FAI-PFC-6.5.4.4 | Corrigir Casos de Uso |  | 1d | 2018-04-12 A | 2018-04-13 A |  | 100% |  |  | 2018-04-19 | 2018-04-20 | 1d | 2014-03-14 | 2014-03-14 |  | Marcos H | 3h | 3h |  | Sim | Sim |
| 77 | FAI-PFC-6.5.4.5 | Revisar correção de Casos de Uso |  | 1d | 2018-04-13 A | 2018-04-16 A | 76 | 100% |  |  | 2018-04-20 | 2018-04-23 | 1d | 2014-03-17 | 2014-03-17 |  | Marcos H | 2h | 2h |  | Sim | Sim |
| 78 | FAI-PFC-6.5.4.6 | Alterar correção dos Casos de Uso |  | 1d | 2018-04-16 A | 2018-04-17 A | 77 | 100% |  |  | 2018-04-23 | 2018-04-24 | 1d | 2014-03-18 | 2014-03-18 |  | Marcos H | 1h | 1h |  | Sim | Sim |
| 79 | FAI-PFC-6.5.5 | **Correção do MER** |  | 3d | 2018-04-17 A | 2018-04-20 A | 78 | 100% |  |  | 2018-04-24 | 2018-04-27 | 3d | 2014-03-19 | 2014-03-21 |  |  | 6h | 6h | Name2 |  |  |
| 80 | FAI-PFC-6.5.5.4 | Corrigir MER |  | 1d | 2018-04-17 A | 2018-04-18 A | 78 | 100% |  |  | 2018-04-24 | 2018-04-25 | 1d | 2014-03-19 | 2014-03-19 |  | Diego | 4h | 4h |  | Sim | Sim |
| 81 | FAI-PFC-6.5.5.5 | Revisar correção do MER |  | 1d | 2018-04-18 A | 2018-04-19 A | 80 | 100% |  |  | 2018-04-25 | 2018-04-26 | 1d | 2014-03-20 | 2014-03-20 |  | Diego | 1h | 1h |  | Sim | Sim |
| 82 | FAI-PFC-6.5.5.6 | Alterar correção do MER |  | 1d | 2018-04-19 A | 2018-04-20 A | 81 | 100% |  |  | 2018-04-26 | 2018-04-27 | 1d | 2014-03-21 | 2014-03-21 |  | Diego | 1h | 1h |  | Sim | Sim |

Notes:
- 59: Correção dos capitulos da Fase 1.
- 65: Elaboração da gestão de gerência de projetos.
- 69: Complementação do Capitulo 5.
- 71: Revisão de toda documentação.
- 75: Correção dos casos de uso do projeto.
- 79: Correção do Modelo Entidade-Relacionamento.

| ID | WBS | Task | Type | Duration | Start | Finish | Predecessors | Complete | Remaining | Actual start | Baseline start | Baseline finish | Baseline duration | Baseline 1 start | Baseline 1 finish | Total slack | Free slack | Constraint | Resources | Work | Actual work | Responsável | Critical? | Text3 |
| --- | --- | --- | --- | --- | --- | --- | --- | --- | --- | --- | --- | --- | --- | --- | --- | --- | --- | --- | --- | --- | --- | --- | --- | --- |
| 83 | FAI-PFC-6.5.6 | **Visão Estrutural** |  | 2d | 2018-04-20 A | 2018-04-24 A |  | 100% |  |  | 2018-04-27 | 2018-05-02 | 3d | 2014-03-24 | 2014-03-26 |  |  |  |  | 6h | 6h | Name3 |  |  |
| 84 | FAI-PFC-6.5.6.4 | Criar Diagrama de Pacotes |  | 1d | 2018-04-20 A | 2018-04-23 A | 82 | 100% |  |  | 2018-04-27 | 2018-04-30 | 1d | 2014-03-24 | 2014-03-24 |  |  |  | Diego | 3h | 3h |  | Sim | Sim |
| 85 | FAI-PFC-6.5.6.5 | Criar Diagrama de Classes |  | 1d | 2018-04-23 A | 2018-04-24 A | 84 | 100% |  |  | 2018-04-30 | 2018-05-01 | 1d | 2014-03-25 | 2014-03-25 |  |  |  | Diego | 1h | 1h |  | Sim | Sim |
| 86 | 3.2.3.3 | Criar Diagrama de Objetos | manual | 1d | 2018-04-20 A | 2018-04-23 A | 85 | 100% |  |  |  |  |  |  |  |  |  |  | Diego | 2h | 2h |  | Sim | Sim |
| 87 | 3.2.4 | **Visão Comportamental** |  | 2d | 2018-04-20 A | 2018-04-24 A |  | 100% |  |  |  |  |  |  |  |  |  |  |  | 4h | 4h |  | Não | Não |
| 88 | 3.2.4.1 | Criar Projeto das Interações | manual | 1d | 2018-04-20 A | 2018-04-23 A | 86 | 100% |  |  |  |  |  |  |  |  |  |  | Diego | 2h | 2h |  | Sim | Sim |
| 89 | 3.2.4.2 | Criar Diagrama de Atividades | manual | 1d | 2018-04-23 A | 2018-04-24 A | 88 | 100% |  |  |  |  |  |  |  |  |  |  | Diego | 2h | 2h |  | Sim | Sim |
| 90 | 3.2.5 | **Visão dos Dados** |  | 2d | 2018-04-24 A | 2018-04-26 A |  | 100% |  |  |  |  |  |  |  |  |  |  |  | 4h | 4h |  | Não | Não |
| 91 | 3.2.5.1 | Criar Modelo Operacional | manual | 1d | 2018-04-24 A | 2018-04-25 A | 89 | 100% |  |  |  |  |  |  |  |  |  |  | Diego | 2h | 2h |  | Sim | Sim |
| 92 | 3.2.5.2 | Criar Dicionário de Dados do Modelo Operacional | manual | 1d | 2018-04-25 A | 2018-04-26 A | 91 | 100% |  |  |  |  |  |  |  |  |  |  | Diego | 2h | 2h |  | Sim | Sim |
| 93 | 3.2.6 | **Projeto de Sistemas Distribuídos** |  | 2d | 2018-04-27 A | 2018-05-01 A |  | 100% |  |  |  |  |  |  |  |  |  |  |  | 6h | 6h |  | Não | Não |
| 94 | 3.2.6.1 | Criar Procedimentos para Tratamento dos Desafios | manual | 1d | 2018-04-27 A | 2018-04-30 A | 92 | 100% |  |  |  |  |  |  |  |  |  |  | Diego | 3h | 3h |  | Sim | Sim |
| 95 | 3.2.6.2 | Descrever tecnologias e Arquiteturas de Distribuição | manual | 1d | 2018-04-30 A | 2018-05-01 A | 94 | 100% |  |  |  |  |  |  |  |  |  |  | Diego | 3h | 3h |  | Sim | Sim |
| 96 | FAI-PFC-6.6 | **Construção** |  | 66d | 2018-04-02 A | 2018-06-30 |  | 45% | 36.03d |  | 2018-05-02 | 2018-05-15 | 9d | 2014-03-27 | 2014-04-09 | 97.88d |  |  |  | 153h | 114.46h |  |  |  |
| 97 | FAI-PFC-6.6.4 | **Correção do Banco de Dados** |  | 3d | 2018-04-12 A | 2018-04-17 A |  | 100% |  |  | 2018-05-02 | 2018-05-07 | 3d | 2014-03-27 | 2014-03-31 |  |  |  |  | 5h | 5h | Name1 |  |  |
| 98 | FAI-PFC-6.6.4.4 | Corrigir Banco de Dados |  | 1d | 2018-04-12 A | 2018-04-13 A |  | 100% |  |  | 2018-05-02 | 2018-05-03 | 1d | 2014-03-27 | 2014-03-27 |  |  | finish no earlier than 2014-03-27 | Marcos H | 2h | 2h |  | Sim | Sim |
| 99 | FAI-PFC-6.6.4.5 | Revisar correção do Banco de Dados |  | 1d | 2018-04-13 A | 2018-04-16 A | 98 | 100% |  |  | 2018-05-03 | 2018-05-04 | 1d | 2014-03-28 | 2014-03-28 |  |  | start no earlier than 2014-03-28 | Marcos H | 2h | 2h |  | Sim | Sim |
| 100 | FAI-PFC-6.6.4.6 | Alterar correção do Banco de Dados |  | 1d | 2018-04-16 A | 2018-04-17 A | 99 | 100% |  |  | 2018-05-04 | 2018-05-07 | 1d | 2014-03-31 | 2014-03-31 |  |  | start no earlier than 2014-03-31 | Marcos H | 1h | 1h |  | Sim | Sim |
| 101 | FAI-PFC-6.6.5 | **Código Front-End** |  | 59d | 2018-04-02 A | 2018-06-21 |  | 26% | 43.92d |  | 2018-05-07 | 2018-05-10 | 3d | 2014-04-01 | 2014-04-03 |  |  |  |  | 75h | 46h | Name2 |  |  |
| 102 | FAI-PFC-6.6.5.4 | Codificar Front-End | manual | 15d | 2018-04-02 A | 2018-04-20 |  | 33% | 10d |  | 2018-05-07 | 2018-05-08 | 1d | 2014-04-01 | 2014-04-01 |  |  |  | Marcos P | 65h | 40h |  | Não | Não |
| 103 | FAI-PFC-6.6.5.5 | Revisar código Front-End |  | 5d | 2018-05-25 A | 2018-06-01 | 102 | 27% | 3.67d |  | 2018-05-08 | 2018-05-09 | 1d | 2014-04-02 | 2014-04-02 | 110.21d | 0d | finish no earlier than 2014-04-02 | Marcos P | 5h | 4h |  | Não | Não |
| 104 | FAI-PFC-6.6.5.6 | Alterar código Front-End |  | 10d | 2018-06-01 A | 2018-06-15 | 103 | 13% | 8.67d |  | 2018-05-09 | 2018-05-10 | 1d | 2014-04-03 | 2014-04-03 | 108.88d |  | finish no earlier than 2014-04-03 | Marcos P | 5h | 2h |  | Não | Não |
| 105 | FAI-PFC-6.6.6 | **Código Back-End** |  | 55d | 2018-04-16 | 2018-06-30 |  | 63% | 20.53d | 2018-04-02 | 2018-05-10 | 2018-05-15 | 3d | 2014-04-04 | 2014-04-08 |  |  |  |  | 73h | 63.46h | Name3 |  |  |
| 106 | FAI-PFC-6.6.6.4 | **Criar código Back-End** |  | 7d | 2018-04-02 A | 2018-04-10 |  | 99% | 0d |  | 2018-05-10 | 2018-05-11 | 1d | 2014-04-04 | 2014-04-04 | 0d |  |  | Marcos P | 58h | 52.46h |  | Não | Não |
| 107 | 3.3.3.1.1 | RF 02 – Recuperar senha | manual | 2d | 2018-04-02 A | 2018-04-04 A |  | 100% |  |  |  |  |  |  |  |  |  |  | Marcos P | 8h | 8h |  | Sim | Sim |
| 108 | 3.3.3.1.2 | RF 03 – Alterar senha | manual | 2d | 2018-04-03 A | 2018-04-05 A |  | 100% |  |  |  |  |  |  |  |  |  |  | Marcos P | 8h | 8h |  | Sim | Sim |
| 109 | 3.3.3.1.3 | RF 06 – Editar perfil do consumidor | manual | 2d | 2018-04-04 A | 2018-04-06 A |  | 100% |  |  |  |  |  |  |  |  |  |  | Marcos P | 8h | 8h |  | Sim | Sim |
| 110 | 3.3.3.1.4 | RF 17 – Editar perfil do estabelecimento | manual | 2d | 2018-04-05 A | 2018-04-07 A |  | 100% |  |  |  |  |  |  |  |  |  |  | Marcos P | 6h | 6h |  | Sim | Sim |
| 111 | 3.3.3.1.5 | RF 24 – Gerenciar cadastro de produto | manual | 2d | 2018-04-07 A | 2018-04-10 A |  | 100% |  |  |  |  |  |  |  |  |  |  | Marcos P | 8h | 8h |  | Sim | Sim |
| 112 | FAI-PFC-6.6.6.5 | Revisar código Back-End |  | 5d | 2018-06-11 A | 2018-06-18 | 106 | 53% | 2.33d |  | 2018-05-11 | 2018-05-14 | 1d | 2014-04-07 | 2014-04-07 | 3d | 0d |  | Marcos P | 10h | 8h |  | Não | Não |
| 113 | FAI-PFC-6.6.6.6 | Alterar código Back-End |  | 10d | 2018-06-18 A | 2018-06-30 | 112 | 30% | 7d |  | 2018-05-14 | 2018-05-15 | 1d | 2014-04-08 | 2014-04-08 | 0d |  |  | Marcos P | 5h | 3h |  | Sim | Sim |
| 114 | FAI-PFC-7 | Fase 2 - Término | milestone | 0d | 2018-06-30 | 2018-06-30 | 113 |  |  |  | 2018-06-30 | 2018-06-30 | 0d | 2014-04-09 | 2014-04-09 | 97.88d | 97d | start no earlier than 2018-06-30 |  |  |  |  | Não | Não |

Notes:
- 83: Criação da Visão Estrutural do projeto.
- 87: Criação da Visão Comportamental do projeto.
- 90: Criação da Visão de Dados do projeto.
- 93: Criação do projeto de Sistemas Distribuidos.
- 97: Correção do Banco de Dados do projeto.
- 101: Codificação Front-End do projeto.
- 105: Codificação Back-End do projeto.

| ID | WBS | Task | Type | Duration | Start | Finish | Predecessors | Complete | Remaining | Baseline start | Baseline finish | Baseline duration | Baseline 1 start | Baseline 1 finish | Total slack | Free slack | Constraint | Resources | Work | Actual work | Responsável | Critical? | Text3 |
| --- | --- | --- | --- | --- | --- | --- | --- | --- | --- | --- | --- | --- | --- | --- | --- | --- | --- | --- | --- | --- | --- | --- | --- |
| 115 | FAI-PFC-8 | **FASE 3** |  | 52d | 2018-06-30 A | 2018-09-08 | 113 | 46% | 28.23d | 2018-06-30 | 2018-09-08 | 52d | 2014-03-03 | 2014-04-09 |  |  |  |  | 164h | 154h |  |  |  |
| 116 | FAI-PFC-8.7 | **Documentação** |  | 17d | 2018-06-30 A | 2018-07-24 |  | 56% | 7.44d | 2018-06-30 | 2018-07-12 | 9d | 2014-03-03 | 2014-03-13 | 34.88d |  |  |  | 69h | 69h |  |  |  |
| 117 | FAI-PFC-8.7.7 | **Correção Fase 2** |  | 5d | 2018-06-30 A | 2018-07-06 |  | 75% | 1.25d | 2018-06-30 | 2018-07-04 | 3d | 2014-03-03 | 2014-03-05 |  |  |  |  | 19h | 19h | Name1 |  |  |
| 118 | FAI-PFC-8.7.7.7 | Corrigir texto do Capítulo 2 |  | 1d | 2018-06-30 A | 2018-07-02 | 113 | 38% | 0.62d | 2018-06-30 | 2018-07-02 | 1d | 2014-03-03 | 2014-03-04 | 3.38d | 0d |  | Jéssica | 3h | 3h |  | Não | Não |
| 119 | FAI-PFC-8.7.7.8 | Corrigir texto do Capítulo 3 |  | 1d | 2018-07-02 A | 2018-07-03 | 118 | 38% | 0.62d | 2018-07-02 | 2018-07-03 | 1d | 2014-03-04 | 2014-03-04 | 3d |  |  | Jéssica | 3h | 3h |  | Não | Não |
| 120 | 5.1.1.3 | Corrigir texto do Capítulo 4 | manual | 1d | 2018-07-03 A | 2018-07-04 A | 119 | 100% |  |  |  |  |  |  |  |  |  | Jéssica | 5h | 5h |  | Sim | Sim |
| 121 | 5.1.1.4 | Corrigir texto do Capítulo 5 | manual | 1d | 2018-07-04 A | 2018-07-05 A | 120 | 100% |  |  |  |  |  |  |  |  |  | Jéssica | 5h | 5h |  | Sim | Sim |
| 122 | FAI-PFC-8.7.7.9 | Corrigir texto do Capítulo 6 |  | 1d | 2018-07-05 A | 2018-07-06 A | 119 | 100% |  | 2018-07-03 | 2018-07-04 | 1d | 2014-03-05 | 2014-03-05 |  |  |  | Diego | 3h | 3h |  | Sim | Sim |
| 123 | FAI-PFC-8.7.8 | **Arquitetura e Projeto** |  | 6d | 2018-07-06 A | 2018-07-16 |  | 75% | 1.5d | 2018-07-04 | 2018-07-09 | 3d | 2014-03-06 | 2014-03-10 |  |  |  |  | 14h | 14h | Name2 |  |  |
| 124 | FAI-PFC-8.7.8.7 | Criar Estrutura fisica do banco de dados |  | 1d | 2018-07-06 A | 2018-07-09 |  | 38% | 0.62d | 2018-07-04 | 2018-07-05 | 1d | 2014-03-06 | 2014-03-06 | 4.38d | 0d |  | Diego | 3h | 3h |  | Não | Não |
| 125 | FAI-PFC-8.7.8.8 | Escrever sobre Design Patterns |  | 1d | 2018-07-09 A | 2018-07-10 | 124 | 38% | 0.62d | 2018-07-05 | 2018-07-06 | 1d | 2014-03-07 | 2014-03-07 | 4d |  |  | Camila | 3h | 3h |  | Não | Não |
| 126 | 5.1.2.3 | Escrever sobre Convenções e guias para a codificação | manual | 1d | 2018-07-10 A | 2018-07-11 A | 125 | 100% |  |  |  |  |  |  |  |  |  | Camila | 3h | 3h |  | Sim | Sim |
| 127 | 5.1.2.4 | Escrever sobre Aspectos visuais da interface do usuário | manual | 1d | 2018-07-11 A | 2018-07-12 A | 126 | 100% |  |  |  |  |  |  |  |  |  | Jéssica | 3h | 3h |  | Sim | Sim |
| 128 | FAI-PFC-8.7.8.9 | Escrever sobre Heuristica e usabilidade |  | 1d | 2018-07-13 A | 2018-07-16 A | 127 | 100% |  | 2018-07-06 | 2018-07-09 | 1d | 2014-03-10 | 2014-03-10 |  |  | start no earlier than 2018-07-13 | Camila | 2h | 2h |  | Sim | Sim |
| 129 | FAI-PFC-8.7.9 | **Revisão do documento** |  | 6d | 2018-07-16 A | 2018-07-24 | 128 | 25% | 4.5d | 2018-07-09 | 2018-07-12 | 3d | 2014-03-11 | 2014-03-13 | 34.88d |  |  |  | 36h | 36h | Name3 |  |  |
| 130 | FAI-PFC-8.7.9.7 | Revisar documento |  | 4d | 2018-07-16 A | 2018-07-20 | 128 | 33% | 2.67d | 2018-07-09 | 2018-07-10 | 1d | 2014-03-11 | 2014-03-11 | 35.04d | 0d |  | Camila; Diego; Jéssica | 32h | 32h |  | Não | Não |
| 131 | FAI-PFC-8.7.9.8 | Alterar documento |  | 2d | 2018-07-20 A | 2018-07-24 | 130 | 8% | 1.83d | 2018-07-10 | 2018-07-11 | 1d | 2014-03-12 | 2014-03-12 | 34.88d |  |  | Diego; Camila; Jéssica | 4h | 4h |  | Não | Não |
| 132 | FAI-PFC-8.8 | **Modelagem** |  | 4d | 2018-07-27 A | 2018-08-02 A |  | 100% |  | 2018-07-12 | 2018-07-25 | 9d | 2014-03-14 | 2014-03-26 |  |  |  |  | 8h | 8h |  |  |  |
| 133 | FAI-PFC-8.8.7 | **Casos de uso** |  | 2d | 2018-07-27 A | 2018-07-31 A |  | 100% |  | 2018-07-12 | 2018-07-17 | 3d | 2014-03-14 | 2014-03-18 |  |  |  |  | 4h | 4h | Name1 |  |  |
| 134 | FAI-PFC-8.8.7.7 | Revisar Casos de uso |  | 1d | 2018-07-27 A | 2018-07-30 A |  | 100% |  | 2018-07-12 | 2018-07-13 | 1d | 2014-03-14 | 2014-03-14 |  |  |  | Diego | 3h | 3h |  | Sim | Sim |
| 135 | FAI-PFC-8.8.7.8 | Alterar Casos de uso |  | 1d | 2018-07-30 A | 2018-07-31 A | 134 | 100% |  | 2018-07-13 | 2018-07-16 | 1d | 2014-03-17 | 2014-03-17 |  |  |  | Diego | 1h | 1h |  | Sim | Sim |
| 136 | FAI-PFC-8.8.8 | **Correção MER** |  | 2d | 2018-07-31 A | 2018-08-02 A |  | 100% |  | 2018-07-17 | 2018-07-20 | 3d | 2014-03-19 | 2014-03-21 |  |  |  |  | 4h | 4h | Name2 |  |  |
| 137 | FAI-PFC-8.8.8.7 | Revisar Modelo Entidade Relacionamento |  | 1d | 2018-07-31 A | 2018-08-01 A | 135 | 100% |  | 2018-07-17 | 2018-07-18 | 1d | 2014-03-19 | 2014-03-19 |  |  |  | Diego | 3h | 3h |  | Sim | Sim |
| 138 | FAI-PFC-8.8.8.8 | Alterar Modelo Entidade Relacionamento |  | 1d | 2018-08-01 A | 2018-08-02 A | 137 | 100% |  | 2018-07-18 | 2018-07-19 | 1d | 2014-03-20 | 2014-03-20 |  |  |  | Diego | 1h | 1h |  | Sim | Sim |

Notes:
- 117: Correção da documentação entregue na Fase 2.
- 123: Criar os itens restantes do Capitulo 6.
- 129: Revisão de toda a documentação da Fase 3.
- 133: Revisão e acréssimo de caso de uso.
- 136: Revisão e acréssimo atributos no MER.

| ID | WBS | Task | Type | Duration | Start | Finish | Predecessors | Complete | Remaining | Actual finish | Baseline start | Baseline finish | Baseline duration | Baseline 1 start | Baseline 1 finish | Total slack | Free slack | Constraint | Resources | Work | Actual work | Responsável | Critical? | Text3 |
| --- | --- | --- | --- | --- | --- | --- | --- | --- | --- | --- | --- | --- | --- | --- | --- | --- | --- | --- | --- | --- | --- | --- | --- | --- |
| 139 | FAI-PFC-8.9 | **Construção** |  | 51d | 2018-07-02 A | 2018-09-08 |  | 40% | 30.53d |  | 2018-07-25 | 2018-08-07 | 9d | 2014-03-27 | 2014-04-09 |  |  |  |  | 87h | 77h |  |  |  |
| 140 | FAI-PFC-8.9.7 | **Código Front-End** |  | 49d | 2018-07-02 A | 2018-09-07 |  | 37% | 30.99d |  | 2018-07-25 | 2018-07-30 | 3d | 2014-03-27 | 2014-03-31 | 1.88d |  |  |  | 16h | 8h | Name1 |  |  |
| 141 | FAI-PFC-8.9.7.7 | Codificar código Front-End |  | 33d | 2018-07-02 A | 2018-08-16 |  | 46% | 17.75d |  | 2018-07-25 | 2018-07-26 | 1d | 2014-03-27 | 2014-03-27 | 4.63d | 0d |  |  |  |  |  | Não | Não |
| 142 | FAI-PFC-8.9.7.8 | Revisar código Front-End |  | 5d | 2018-08-16 A | 2018-08-23 | 141 | 20% | 4d |  | 2018-07-26 | 2018-07-27 | 1d | 2014-03-28 | 2014-03-28 | 3.63d | 0d | start no earlier than 2014-03-28 |  | 8h | 4h |  | Não | Não |
| 143 | FAI-PFC-8.9.7.9 | Alterar código Front-End |  | 11d | 2018-08-23 A | 2018-09-07 | 142 | 16% | 9.24d |  | 2018-07-27 | 2018-07-30 | 1d | 2014-03-31 | 2014-03-31 | 1.88d |  | start no earlier than 2014-03-31 |  | 8h | 4h |  | Não | Não |
| 144 | FAI-PFC-8.9.8 | **Código Back-End** |  | 50d | 2018-07-02 A | 2018-09-07 |  | 48% | 25.8d |  | 2018-07-30 | 2018-08-02 | 3d | 2014-04-01 | 2014-04-03 |  |  |  |  | 71h | 69h | Name2 |  |  |
| 145 | FAI-PFC-8.9.8.7 | **Codificar código Back-End** |  | 28d | 2018-07-02 A | 2018-08-09 |  | 100% |  | 2018-07-23 | 2018-07-30 | 2018-07-31 | 1d | 2014-04-01 | 2014-04-01 |  |  |  |  | 64h | 64h |  | Não | Não |
| 146 | 5.3.2.1.1 | RF 10 – Gerenciar lista de compras | manual | 1d | 2018-07-02 A | 2018-07-03 A |  | 100% |  |  |  |  |  |  |  |  |  |  | Marcos H | 8h | 8h |  | Sim | Sim |
| 147 | 5.3.2.1.2 | RF 16 – Gerenciar cadastro de promoção | manual | 1d | 2018-07-03 A | 2018-07-04 A |  | 100% |  |  |  |  |  |  |  |  |  |  | Marcos H | 8h | 8h |  | Sim | Sim |
| 148 | 5.3.2.1.3 | RF 18 – Gerenciar preço de produto | manual | 1d | 2018-07-05 A | 2018-07-06 A |  | 100% |  |  |  |  |  |  |  |  |  |  | Marcos H | 8h | 8h |  | Sim | Sim |
| 149 | 5.3.2.1.4 | RF 22 – Gerenciar linhas | manual | 1d | 2018-07-06 A | 2018-07-09 A |  | 100% |  |  |  |  |  |  |  |  |  |  | Marcos H | 8h | 8h |  | Sim | Sim |
| 150 | 5.3.2.1.5 | RF 09 – Selecionar raio de distância para obter estabelecimentos localizados na área | manual | 1d | 2018-07-09 A | 2018-07-10 A |  | 100% |  |  |  |  |  |  |  |  |  |  | Marcos P | 8h | 8h |  | Sim | Sim |
| 151 | 5.3.2.1.6 | RF 23 – Gerenciar cadastro de consumidor e/ou estabelecimento | manual | 1d | 2018-07-12 A | 2018-07-13 A |  | 100% |  |  |  |  |  |  |  |  |  |  | Marcos H | 8h | 8h |  | Sim | Sim |
| 152 | 5.3.2.1.7 | RF 07 – Avaliar estabelecimento | manual | 1d | 2018-07-16 A | 2018-07-17 A |  | 100% |  |  |  |  |  |  |  |  |  |  | Marcos P | 8h | 8h |  | Sim | Sim |
| 153 | 5.3.2.1.8 | RF 08 – Editar avaliação do estabelecimento | manual | 1d | 2018-07-20 A | 2018-07-23 A |  | 100% |  |  |  |  |  |  |  |  |  |  | Marcos P | 8h | 8h |  | Sim | Sim |
| 154 | FAI-PFC-8.9.8.8 | Revisar código Back-End |  | 4d | 2018-08-20 A | 2018-08-24 | 145 | 12% | 3.52d |  | 2018-07-31 | 2018-08-01 | 1d | 2014-04-02 | 2014-04-02 | 49.19d | 1d | finish no earlier than 2014-04-02 |  | 4h | 3h |  | Não | Não |
| 155 | FAI-PFC-8.9.8.9 | Alterar código Back-End |  | 8d | 2018-08-27 A | 2018-09-06 | 154 | 15% | 6.8d |  | 2018-08-01 | 2018-08-02 | 1d | 2014-04-03 | 2014-04-03 | 46.99d | 2d | finish no earlier than 2014-04-03 |  | 3h | 2h |  | Não | Não |
| 156 | FAI-PFC-9 | Fase 3 - Término | milestone | 0d | 2018-09-08 | 2018-09-08 |  |  |  |  | 2018-09-08 | 2018-09-08 | 0d | 2014-04-09 | 2014-04-09 | 46.88d | 46d | start no earlier than 2018-09-08 |  |  |  |  | Não | Não |
| 157 | FAI-PFC-10 | **FASE 4** |  | 47d | 2018-09-08 A | 2018-11-10 | 155 | 100% |  | 2018-10-23 | 2018-09-08 | 2018-11-10 | 47d | 2014-03-03 | 2014-04-09 |  |  |  |  | 152h | 152h |  |  |  |
| 158 | FAI-PFC-10.10 | **Documentação** |  | 15d | 2018-09-08 A | 2018-09-28 A | 155 | 100% |  |  | 2018-09-08 | 2018-09-20 | 9d | 2014-03-03 | 2014-03-13 |  |  |  |  | 44h | 44h |  |  |  |
| 159 | FAI-PFC-10.10.10 | **Correção Fase 3** |  | 5d | 2018-09-08 A | 2018-09-14 A | 155 | 100% |  |  | 2018-09-08 | 2018-09-12 | 3d | 2014-03-03 | 2014-03-05 |  |  |  |  | 10h | 10h | Name1 |  |  |
| 160 | FAI-PFC-10.10.10.10 | Corrigir texto do Capítulo 2 |  | 1d | 2018-09-08 A | 2018-09-10 A |  | 100% |  |  | 2018-09-08 | 2018-09-10 | 1d | 2014-03-03 | 2014-03-04 |  |  |  | Jéssica; Camila | 3h | 3h |  | Sim | Sim |
| 161 | 7.1.1.2 | Corrigir texto do Capítulo 3 | manual | 1d | 2018-09-10 A | 2018-09-11 A | 160 | 100% |  |  |  |  |  |  |  |  |  |  | Jéssica; Camila | 2h | 2h |  | Sim | Sim |
| 162 | 7.1.1.3 | Corrigir texto do Capítulo 4 | manual | 1d | 2018-09-11 A | 2018-09-12 A | 161 | 100% |  |  |  |  |  |  |  |  |  |  | Jéssica; Camila | 2h | 2h |  | Sim | Sim |
| 163 | FAI-PFC-10.10.10.11 | Corrigir texto do Capítulo 5 |  | 1d | 2018-09-12 A | 2018-09-13 A | 162 | 100% |  |  | 2018-09-10 | 2018-09-11 | 1d | 2014-03-04 | 2014-03-04 |  |  |  | Jéssica; Camila | 2h | 2h |  | Sim | Sim |
| 164 | FAI-PFC-10.10.10.12 | Corrigir texto do Capítulo 6 |  | 1d | 2018-09-13 A | 2018-09-14 A | 163 | 100% |  |  | 2018-09-11 | 2018-09-12 | 1d | 2014-03-05 | 2014-03-05 |  |  |  | Jéssica; Camila | 1h | 1h |  | Sim | Sim |

Notes:
- 140: Codificação Front-End do sistema.
- 144: Codificação Back-End do sistema.
- 159: Correção das Fases 1, 2 e 3.

| ID | WBS | Task | Type | Duration | Start | Finish | Predecessors | Complete | Actual finish | Baseline start | Baseline finish | Baseline duration | Baseline 1 start | Baseline 1 finish | Resources | Work | Actual work | Responsável | Critical? | Text3 |
| --- | --- | --- | --- | --- | --- | --- | --- | --- | --- | --- | --- | --- | --- | --- | --- | --- | --- | --- | --- | --- |
| 165 | FAI-PFC-10.10.11 | **Resumo** |  | 2d | 2018-09-14 A | 2018-09-18 |  | 100% | 2018-09-17 | 2018-09-12 | 2018-09-17 | 3d | 2014-03-06 | 2014-03-10 |  | 3h | 3h | Name2 |  |  |
| 166 | FAI-PFC-10.10.11.10 | Elaborar Resumo do projeto |  | 1d | 2018-09-14 A | 2018-09-17 A |  | 100% |  | 2018-09-12 | 2018-09-13 | 1d | 2014-03-06 | 2014-03-06 | Jéssica | 2h | 2h |  | Sim | Sim |
| 167 | 7.1.2.2 | Revisar Resumo | manual | 0.12d | 2018-09-14 A | 2018-09-14 A |  | 100% |  |  |  |  |  |  | Camila | 1h | 1h |  | Sim | Sim |
| 168 | FAI-PFC-10.10.12 | **Arquitetura e Projeto** |  | 1.06d | 2018-09-14 A | 2018-09-17 A |  | 100% |  | 2018-09-17 | 2018-09-20 | 3d | 2014-03-11 | 2014-03-13 |  | 2h | 2h | Name3 |  |  |
| 169 | FAI-PFC-10.10.12.10 | Criar Análise de Complexidade Algorítmica |  | 1d | 2018-09-14 A | 2018-09-17 A | 164 | 100% |  | 2018-09-17 | 2018-09-18 | 1d | 2014-03-11 | 2014-03-11 | Marcos H | 1h | 1h |  | Sim | Sim |
| 170 | 7.1.3.2 | Revisar Análise de Complexidade | manual | 0.06d | 2018-09-17 A | 2018-09-17 A | 169 | 100% |  |  |  |  |  |  | Camila; Jéssica | 1h | 1h |  | Sim | Sim |
| 171 | 7.1.4 | **Plano de Testes** |  | 4d | 2018-09-18 A | 2018-09-24 A |  | 100% |  |  |  |  |  |  |  | 18h | 18h |  | Não | Não |
| 172 | 7.1.4.1 | Criar Plano de Testes | manual | 1d | 2018-09-18 A | 2018-09-19 A |  | 100% |  |  |  |  |  |  | Jéssica | 4h | 4h |  | Sim | Sim |
| 173 | 7.1.4.2 | Revisar Plano de Testes | manual | 1d | 2018-09-19 A | 2018-09-20 A | 172 | 100% |  |  |  |  |  |  | Marcos P | 2h | 2h |  | Sim | Sim |
| 174 | 7.1.4.3 | Alterar Plano de Testes | manual | 1d | 2018-09-20 A | 2018-09-21 A | 173 | 100% |  |  |  |  |  |  | Jéssica | 2h | 2h |  | Sim | Sim |
| 175 | 7.1.4.4 | Codificar Plano de Testes | manual | 1d | 2018-09-18 A | 2018-09-19 A | 172 | 100% |  |  |  |  |  |  | Marcos P | 8h | 8h |  | Sim | Sim |
| 176 | 7.1.4.5 | Criar Capítulo 7 | manual | 1d | 2018-09-18 A | 2018-09-24 A | 174 | 100% |  |  |  |  |  |  | Jéssica | 2h | 2h |  | Sim | Sim |
| 177 | 7.1.5 | **Plano de Implantação** |  | 2d | 2018-09-24 A | 2018-09-26 A |  | 100% |  |  |  |  |  |  |  | 6h | 6h |  | Não | Não |
| 178 | 7.1.5.1 | Criar Plano de Implantação | manual | 1d | 2018-09-24 A | 2018-09-25 A |  | 100% |  |  |  |  |  |  | Diego; Jéssica | 3h | 3h |  | Sim | Sim |
| 179 | 7.1.5.2 | Revisar Plano de Implantação | manual | 1d | 2018-09-24 A | 2018-09-25 A |  | 100% |  |  |  |  |  |  | Jéssica | 1h | 1h |  | Sim | Sim |
| 180 | 7.1.5.3 | Alterar Plano de Implantação | manual | 1d | 2018-09-24 A | 2018-09-25 A |  | 100% |  |  |  |  |  |  | Jéssica | 1h | 1h |  | Sim | Sim |
| 181 | 7.1.5.4 | Criar Capítulo 8 | manual | 1d | 2018-09-25 A | 2018-09-26 A | 180 | 100% |  |  |  |  |  |  |  | 1h | 1h |  | Sim | Sim |
| 182 | 7.1.6 | **Conclusão** |  | 2d | 2018-09-26 A | 2018-09-28 A |  | 100% |  |  |  |  |  |  |  | 5h | 5h |  | Sim | Sim |
| 183 | 7.1.6.1 | Criar a Conclusão do projeto | manual | 1d | 2018-09-26 A | 2018-09-27 A |  | 100% |  |  |  |  |  |  | Jéssica | 2h | 2h |  | Sim | Sim |
| 184 | 7.1.6.2 | Revisar Conclusão do projeto | manual | 1d | 2018-09-26 A | 2018-09-27 A |  | 100% |  |  |  |  |  |  | Jéssica | 1h | 1h |  | Sim | Sim |
| 185 | 7.1.6.3 | Alterar Conclusão do projeto | manual | 1d | 2018-09-26 A | 2018-09-27 A |  | 100% |  |  |  |  |  |  | Jéssica | 1h | 1h |  | Sim | Sim |
| 186 | 7.1.6.4 | Criar Capítulo 9 | manual | 1d | 2018-09-27 A | 2018-09-28 A | 185 | 100% |  |  |  |  |  |  | Jéssica | 1h | 1h |  | Sim | Sim |
| 187 | FAI-PFC-10.11 | **Construção** |  | 34d | 2018-09-25 A | 2018-11-10 |  | 100% | 2018-10-23 | 2018-09-20 | 2018-10-03 | 9d | 2014-03-14 | 2014-03-26 |  | 108h | 108h |  |  |  |
| 188 | FAI-PFC-10.11.10 | **Código Front-End** |  | 33d | 2018-09-25 A | 2018-11-09 |  | 100% | 2018-10-23 | 2018-09-20 | 2018-09-25 | 3d | 2014-03-14 | 2014-03-18 |  | 53h | 53h | Name1 |  |  |
| 189 | FAI-PFC-10.11.10.10 | Codificar código Front-End | manual | 5d | 2018-09-25 A | 2018-10-02 A |  | 100% |  | 2018-09-20 | 2018-09-21 | 1d | 2014-03-14 | 2014-03-14 |  | 40h | 40h |  | Sim | Sim |
| 190 | FAI-PFC-10.11.10.11 | Revisar código Front-End |  | 5d | 2018-10-16 A | 2018-10-23 A | 189 | 100% |  | 2018-09-21 | 2018-09-24 | 1d | 2014-03-17 | 2014-03-17 | Marcos H; Marcos P | 5h | 5h |  | Sim | Sim |
| 191 | FAI-PFC-10.11.10.12 | Alterar código Front-End |  | 5d | 2018-10-16 A | 2018-10-23 A | 190 | 100% |  | 2018-09-24 | 2018-09-25 | 1d | 2014-03-18 | 2014-03-18 | Marcos H; Marcos P | 8h | 8h |  | Sim | Sim |

Notes:
- 165: Elaboração do resumo do projeto.
- 168: Descrição do pacote de trabalho
- 171: Elaboração do Plano de Testes do projeto.
- 177: Elaboração do Plano de Implantação.
- 182: Elaboração da tópico de Conclusão do projeto.
- 188: Codificação Front-End do sistema.

| ID | WBS | Task | Type | Duration | Start | Finish | Predecessors | Complete | Actual finish | Baseline start | Baseline finish | Baseline duration | Baseline 1 start | Baseline 1 finish | Total slack | Free slack | Constraint | Resources | Work | Actual work | Responsável | Critical? | Text3 |
| --- | --- | --- | --- | --- | --- | --- | --- | --- | --- | --- | --- | --- | --- | --- | --- | --- | --- | --- | --- | --- | --- | --- | --- |
| 192 | FAI-PFC-10.11.11 | **Código Back-End** |  | 33d | 2018-09-25 A | 2018-11-09 |  | 100% | 2018-10-18 | 2018-09-25 | 2018-09-28 | 3d | 2014-03-19 | 2014-03-21 |  |  |  |  | 55h | 55h | Name2 |  |  |
| 193 | FAI-PFC-10.11.11.10 | **Codificar código Back-End** |  | 33d | 2018-09-25 A | 2018-11-09 |  | 100% | 2018-10-09 | 2018-09-25 | 2018-09-26 | 1d | 2014-03-19 | 2014-03-19 |  |  |  |  | 48h | 48h |  | Sim | Sim |
| 194 | FAI-PFC-10.11.11.10.1 | RF 13 – Marcar uma lista de compras como favorita | manual | 1.6d | 2018-09-25 A | 2018-09-26 A |  | 100% |  |  |  |  |  |  |  |  |  | Marcos H; Marcos P | 8h | 8h |  | Sim | Sim |
| 195 | FAI-PFC-10.11.11.10.2 | RF 14 – Apresentar produtos ofertados em promoção | manual | 1.33d | 2018-09-28 A | 2018-10-01 A |  | 100% |  |  |  |  |  |  |  |  |  | Marcos H; Marcos P | 8h | 8h |  | Sim | Sim |
| 196 | FAI-PFC-10.11.11.10.3 | RF 15 – Pesquisar produto | manual | 1.33d | 2018-10-03 A | 2018-10-04 A |  | 100% |  |  |  |  |  |  |  |  |  | Marcos H; Marcos P | 8h | 8h |  | Sim | Sim |
| 197 | 7.2.2.1.4 | RF 11 – Comparar lista de compras | manual | 0.5d | 2018-10-04 A | 2018-10-04 A |  | 100% |  |  |  |  |  |  |  |  |  | Marcos H; Marcos P | 8h | 8h |  | Sim | Sim |
| 198 | FAI-PFC-10.11.11.10.5 | RF 21 – Realizar cotação de produtos | manual | 1d | 2018-10-05 A | 2018-10-08 A |  | 100% |  |  |  |  |  |  |  |  |  | Marcos H | 8h | 8h |  | Não | Não |
| 199 | FAI-PFC-10.11.11.10.4 | RF 20 – Visualizar dashboard | manual | 1.6d | 2018-10-08 A | 2018-10-09 A |  | 100% |  |  |  |  |  |  |  |  |  | Marcos H; Marcos P | 8h | 8h |  | Sim | Sim |
| 200 | FAI-PFC-10.11.11.11 | Revisar código Back-End |  | 2.12d | 2018-10-16 A | 2018-10-18 A |  | 100% |  | 2018-09-26 | 2018-09-27 | 1d | 2014-03-20 | 2014-03-20 |  |  |  | Marcos H; Marcos P | 4h | 4h |  | Sim | Sim |
| 201 | FAI-PFC-10.11.11.12 | Alterar código Back-End |  | 2d | 2018-10-16 A | 2018-10-18 A |  | 100% |  | 2018-09-27 | 2018-09-28 | 1d | 2014-03-21 | 2014-03-21 |  |  |  | Marcos H; Marcos P | 3h | 3h |  | Sim | Sim |
| 202 | FAI-PFC-11 | Fase 4 - Término | milestone | 0d | 2018-11-10 | 2018-11-10 |  |  |  | 2018-11-10 | 2018-11-10 | 0d | 2014-04-09 | 2014-04-09 | 0.88d | 0d | start no earlier than 2018-11-10 |  |  |  |  | Não | Não |
| 203 | FAI-PFC-12 | Final do PFC | milestone, manual | 0d | 2018-11-10 | 2018-11-10 | 56, 114, 156, 202 |  |  | 2018-11-10 | 2018-11-10 | 0d |  |  |  |  |  |  |  |  |  | Não | Não |

Notes:
- 192: Codificação Back-End do sistema.
